| code | name | wbs_path | planned_start | planned_finish | percent_complete | is_critical |
| --- | --- | --- | --- | --- | --- | --- |
| CCCP0200 | [B zone] CIP/H-Pile 설치 - 1 | Construction > 토목 > CIP/H-Pile > B zone | 2026.05.07 | 2026.06.09 | 0 | True |
| CCCP0100 | [A zone] CIP/H-Pile 설치 - 1 | Construction > 토목 > CIP/H-Pile > A zone | 2026.05.23 | 2026.05.29 | 0 | True |
| CCCO0005 | 공통가설 (현장사무실, 품질시험비 등) | Construction > 토목 > 공통 | 2026.04.30 | 2027.04.27 | 0 |  |
| CCCO0010 | 공통가설 (가설전기/용수, 세륜기, CCTV 등) | Construction > 토목 > 공통 | 2026.04.30 | 2026.06.27 | 0 |  |
| CCMO0000 | 계측관리 | Construction > 토목 > 계측관리 | 2026.04.30 | 2027.04.27 | 0 |  |
| CCCP0105 | [A zone] CIP/H-Pile 설치 - 2 | Construction > 토목 > CIP/H-Pile > A zone | 2026.05.02 | 2026.05.29 | 0 |  |
| CCCP0300 | [C zone] CIP/H-Pile 설치 - 1 | Construction > 토목 > CIP/H-Pile > C zone | 2026.05.19 | 2026.06.26 | 0 |  |
| CCDW0100 | [A zone] ESG 그라우팅 - 1 | Construction > 토목 > 차수 | 2026.05.22 | 2026.05.29 | 0 |  |
